# 总进度

Schedule from a web Gantt chart, 2024-06-05 to 2024-11-14.
Every day is a working day

## Schedule

| ID | WBS | Task | Duration | Start | Finish | Complete | inPeople | Status |
| --- | --- | --- | --- | --- | --- | --- | --- | --- |
| 2 | 1 | 投标 | 8d | 2024-06-05 | 2024-06-12 | 100% | 行拓 | done |
| 3 | 2 | 合同签订 | 16d | 2024-06-13 | 2024-06-28 | 100% | 行拓 | done |
| 4 | 3 | 项目启动 | 11d | 2024-06-15 | 2024-06-25 | 100% | 行拓、通发、运维 | done |
| 5 | 4 | 需求分析 | 11d | 2024-06-15 | 2024-06-25 | 100% | 行拓、通发、厂家 |  |
| 6 | 5 | 方案设计确认 | 20d | 2024-06-21 | 2024-07-10 | 100% | 行拓、通发、厂家 |  |
| 7 | 6 | 设备采购 | 52d | 2024-06-08 | 2024-07-29 | 100% | 行拓、商合、厂家 |  |
| 8 | 7 | 设备到货 | 35d | 2024-06-25 | 2024-07-29 | 100% | 商合、厂家 |  |
| 9 | 8 | 首站定标 | 6d | 2024-07-01 | 2024-07-06 | 100% | 行拓、通发、厂家 | waiting |
| 10 | 9 | 塔体改造 | 56d | 2024-07-03 | 2024-08-27 | 40% | 通发 | waiting |
| 11 | 10 | 设备安装 | 57d | 2024-07-03 | 2024-08-28 | 22% | 通发 | waiting |
| 12 | 11 | 线路施工 | 37d | 2024-07-24 | 2024-08-29 | 26% | 运营商 | waiting |
| 13 | 12 | 平台上线 | 38d | 2024-07-25 | 2024-08-31 | 4% | 行拓 | waiting |
| 14 | 13 | 平台部署 | 42d | 2024-07-10 | 2024-08-20 | 50% | 行拓、厂家 | waiting |
| 15 | 14 | 系统整体调试 | 42d | 2024-07-20 | 2024-08-30 |  | 行拓、厂家 | waiting |
| 16 | 15 | 项目初验 | 11d | 2024-08-31 | 2024-09-10 |  | 行拓、通发、运维、厂家 | waiting |
| 17 | 16 | 试运行 | 31d | 2024-09-10 | 2024-10-10 |  | 行拓、厂家 | waiting |
| 18 | 17 | 项目终验 | 21d | 2024-10-11 | 2024-10-31 |  | 行拓、厂家 | waiting |
| 19 | 18 | 竣工文档移交 | 10d | 2024-10-16 | 2024-10-25 |  | 行拓、通发、维护 | waiting |
| 20 | 19 | 回款 | 30d | 2024-10-16 | 2024-11-14 |  | 行拓 | waiting |
